Schedule from MS Project, 2013-03-22 to 2014-02-24.

## Calendars

- Estándar: Mon-Fri 09:00-13:00, 15:00-19:00; Sat-Sun off.

## Resources

| Resource | Rate |
| --- | --- |
| DIRECTOR PROYECTO | 60 |
| INGENIERO AGRONOMO | 48 |
| EXPERTO GIS | 47 |
| ECONOMISTA | 45 |
| SOCIOLOGO | 45 |
| INGENIERO EN MEDIOAMBIENTE | 45 |
| ADMINISTRATIVO | 30 |
| TECNICOS DE APOYO | 35 |

## Schedule

| ID | WBS | Task | Type | Duration | Start | Finish | Predecessors | Total slack | Free slack |
| --- | --- | --- | --- | --- | --- | --- | --- | --- | --- |
| 1 | 1 | **TOTAL PROYECTO** |  | 242d | 2013-03-22 | 2014-02-24 |  | 0d |  |
| 2 | 1.1 | **FASE 1: PREPARACION PARA LA FORMULACION** |  | 31d | 2013-03-22 | 2013-05-03 |  | 0d |  |
| 3 | 1.1.1 | INICIO | milestone | 0d | 2013-03-22 | 2013-03-22 |  | 0d |  |
| 4 | 1.1.2 | TERMINOS DE REFERENCIA. Objetivos. Condicionantes del Promotor |  | 10d | 2013-03-22 | 2013-04-04 | 3 | 5d |  |
| 5 | 1.1.3 | FINANCIACION |  | 7d | 2013-03-22 | 2013-04-01 | 3 | 8d |  |
| 6 | 1.1.4 | COMITÉ DE COORDINACION. Constitución y organización |  | 5d | 2013-03-22 | 2013-03-28 | 3 | 0d |  |
| 7 | 1.1.5 | EQUIPO DE FORMULACION. Recursos humanos y técnicos |  | 15d | 2013-03-29 | 2013-04-18 | 4SS, 6 | 0d |  |
| 8 | 1.1.6 | METODOLOGIA Y PLAN DE TRABAJO |  | 10d | 2013-04-12 | 2013-04-25 | 7FS-5d, 5, 4, 6SS | 0d |  |
| 9 | 1.1.7 | DOC. Nº1: Fin P.F. |  | 5d | 2013-04-26 | 2013-05-02 | 8 | 0d |  |
| 10 | 1.1.8 | Entrega al PROMOTOR. Doc. nº1 | milestone | 0d | 2013-05-02 | 2013-05-02 | 9 | 0d |  |
| 11 | 1.1.9 | SEMINARIO DE LANZAMIENTO DEL PROYECTO |  | 1d | 2013-05-03 | 2013-05-03 | 10 | 0d |  |
| 12 | 1.2 | **FASE 2: ANALISIS Y DIAGNOSTICO** |  | 94d | 2013-05-06 | 2013-09-12 |  | 0d |  |
| 13 | 1.2.1 | **ANALISIS ANTECEDENTES** |  | 15d | 2013-05-06 | 2013-05-24 | 11 | 0d |  |
| 14 | 1.2.1.1 | POLITICAS Y PROGRAMAS |  | 10d | 2013-05-06 | 2013-05-17 | 11 | 176d | 52d |
| 15 | 1.2.1.2 | MARCO LEGAL |  | 15d | 2013-05-06 | 2013-05-24 | 11 | 171d | 47d |
| 16 | 1.2.1.3 | BASES DE DATOS EXISTENTES |  | 7d | 2013-05-06 | 2013-05-14 | 11 | 0d |  |
| 17 | 1.2.2 | **ANALISIS DEL AREA DEL PROYECTO** |  | 80d | 2013-05-15 | 2013-09-03 | 11, 16 | 0d |  |
| 18 | 1.2.2.1 | ANALISIS DE RECURSOS NATURALES. INVENTARIO AMBIENTAL |  | 35d | 2013-05-15 | 2013-07-02 |  | 124d | 0d |
| 19 | 1.2.2.2 | INFRAESTRUCTURAS Y SERVICIOS |  | 20d | 2013-07-03 | 2013-07-30 | 18 | 124d | 0d |
| 20 | 1.2.2.3 | ANALISIS DE SECTORES PRODUCTIVOS |  | 25d | 2013-07-31 | 2013-09-03 | 14, 15, 19 | 124d |  |
| 21 | 1.2.2.4 | ANALISIS POBLACIONAL |  | 20d | 2013-05-15 | 2013-06-11 |  | 184d |  |
| 22 | 1.2.2.5 | SISTEMA GENERAL TERRITORIAL DE INFORMACION |  | 21d | 2013-05-15 | 2013-06-12 | 16 | 0d |  |
| 23 | 1.2.3 | **ANALISIS DE AGENTES Y PARTICIPACION** |  | 82d | 2013-05-22 | 2013-09-12 |  | 0d |  |
| 24 | 1.2.3.1 | IDENTIFICACIÓN DE AGENTES Y TIPOLOGIA |  | 10d | 2013-05-22 | 2013-06-04 | 22SS+5d | 0d |  |
| 25 | 1.2.3.2 | ANALISIS DE LA PARTICIPACIÓN: ENCUESTA CON LOS AGENTES |  | 60d | 2013-06-05 | 2013-08-27 | 24 | 0d |  |
| 26 | 1.2.3.3 | TALLER DE PARTICIPACIÓN AGENTES PUBLICOS |  | 1d | 2013-06-19 | 2013-06-19 | 25SS+10d | 43d | 0d |
| 27 | 1.2.3.4 | ANALISIS PROYECTIVO "SIN" |  | 6d | 2013-06-20 | 2013-06-27 | 26 | 43d |  |
| 28 | 1.2.3.5 | INFORME DE PARTICIPACION: Problemas, necesidades, oportunidades |  | 10d | 2013-08-28 | 2013-09-10 | 27, 25 | 0d |  |
| 29 | 1.2.3.6 | PRESENTACIÓN Y VALIDACION DE CONCLUSIONES |  | 2d | 2013-09-11 | 2013-09-12 | 28 | 0d |  |
| 30 | 1.2.3.7 | CONCLUSIONES Y Doc. Nº2. Presentación al PROMOTOR | milestone | 0d | 2013-09-12 | 2013-09-12 | 29 | 0d |  |
| 31 | 1.2.3.8 | Doc. nº2. REVISIÓN POR EL PROMOTOR | milestone | 0d | 2013-09-12 | 2013-09-12 | 29, 30 | 0d |  |

| ID | WBS | Task | Type | Duration | Start | Finish | Predecessors | Total slack | Free slack |
| --- | --- | --- | --- | --- | --- | --- | --- | --- | --- |
| 32 | 1.3 | **FASE 3: DISEÑO DEL PROYECTO** |  | 92d | 2013-09-13 | 2014-01-20 |  | 0d |  |
| 33 | 1.3.1 | OBJETIVOS Y METAS |  | 1d | 2013-09-13 | 2013-09-13 | 31 | 0d |  |
| 34 | 1.3.2 | ALTERNATIVA ESTRATEGICAS: ANÁLISIS Y SELECCIÓN |  | 7d | 2013-09-16 | 2013-09-24 | 33 | 0d |  |
| 35 | 1.3.3 | FORMULACION DE LOS COMPONENTES |  | 60d | 2013-09-25 | 2013-12-17 | 34 | 0d |  |
| 36 | 1.3.4 | DISEÑO DE LA ORGANIZACIÓN |  | 10d | 2013-12-18 | 2013-12-31 | 35 | 0d |  |
| 37 | 1.3.5 | SISTEMA DE SEGUIMIENTO Y EVALUACION. Programación de la ejecución |  | 7d | 2014-01-01 | 2014-01-09 | 36, 35 | 32d |  |
| 38 | 1.3.6 | PRESUPUESTACION |  | 4d | 2014-01-01 | 2014-01-06 | 35, 36 | 0d |  |
| 39 | 1.3.7 | Doc. Nº 3. Entrega al PROMOTOR | milestone | 0d | 2014-01-06 | 2014-01-06 | 38 | 0d |  |
| 40 | 1.3.8 | Doc. Nº 3. REVISION POR EL PROMOTOR |  | 10d | 2014-01-07 | 2014-01-20 | 39 | 0d |  |
| 41 | 1.4 | **FASE 4: EVALUACION MULTICRITERIO** |  | 15d | 2014-01-21 | 2014-02-10 |  | 0d |  |
| 42 | 1.4.1 | EVALUACION ECONOMICO-FINANCIERA |  | 10d | 2014-01-21 | 2014-02-03 | 40 | 0d |  |
| 43 | 1.4.2 | EVALUACION SOCIAL Y CULTURAL |  | 10d | 2014-01-21 | 2014-02-03 | 40 | 0d |  |
| 44 | 1.4.3 | EVALUACION AMBIENTAL |  | 10d | 2014-01-21 | 2014-02-03 | 40 | 0d |  |
| 45 | 1.4.4 | EVALUACION DE RIESGOS, SEGURIDAD Y SALUD DEL PROYECTO |  | 10d | 2014-01-21 | 2014-02-03 | 40 | 15d | 0d |
| 46 | 1.4.5 | Entrega Doc. nº 4. VIABILIDAD Y SOSTENIBLIDAD | milestone | 0d | 2014-02-03 | 2014-02-03 | 45 | 15d |  |
| 47 | 1.4.6 | Revisión Doc. nº 4 |  | 5d | 2014-02-04 | 2014-02-10 | 42, 43, 44 | 0d |  |
| 48 | 1.5 | **FASE 5: DOCUMENTACION** |  | 10d | 2014-02-11 | 2014-02-24 |  | 0d |  |
| 49 | 1.5.1 | MEMORIA |  | 6d | 2014-02-11 | 2014-02-18 | 47 | 4d |  |
| 50 | 1.5.2 | ANEJOS A LA MEMORIA |  | 10d | 2014-02-11 | 2014-02-24 | 47 | 0d |  |
| 51 | 1.5.3 | PLANOS |  | 10d | 2014-02-11 | 2014-02-24 | 47 | 0d |  |
| 52 | 1.5.4 | PLIEGO DE CONDICIONES |  | 3d | 2014-02-11 | 2014-02-13 | 47 | 7d |  |
| 53 | 1.5.5 | PRESUPUESTO |  | 3d | 2014-02-11 | 2014-02-13 | 47 | 7d |  |
| 54 | 1.5.6 | ESTUDIO DE SEGURIDAD Y SALUD |  | 10d | 2014-02-11 | 2014-02-24 | 47 | 0d |  |
| 55 | 1.5.7 | Entrega del proyecto | milestone | 0d | 2014-02-24 | 2014-02-24 | 54, 49, 50, 51, 52, 53 | 0d |  |
